# RentPark

Schedule from MS Project, 2025-12-05 to 2026-04-03, 7 hours a day, costs in €.

## Calendars

- Heures de travail: Mon-Thu off; Fri 08:00-12:00; Sat-Sun off. Exceptions (off unless hours are given): 2025-12-03 to 2025-12-05 08:00-12:00 (Semaine 9), 2025-12-10 to 2025-12-11 08:00-12:00 (Semaine 10), 2025-12-16 to 2025-12-19 08:00-12:00 (Semaine 11), 2025-12-20 to 2026-01-04 (Vacances de Noël), 2026-01-06 to 2026-01-09 08:00-12:00 (Semaine 15), 2026-01-13 to 2026-01-16 08:00-12:00 (Semaine 16), 2026-01-26 09:00-12:00, 14:00-18:00, 2026-01-29 08:00-10:00 (Semaine 18), 2026-02-04 09:00-12:00, 14:00-18:00, 2026-02-16 to 2026-02-22 (Semaine 19), 2026-02-26 08:00-10:00 (Semaine 20), 2026-03-26 08:00-10:00 (Semaine 24), 2026-04-03 08:00-10:00 (Semaine 25).

## Resources

| Resource | Rate |
| --- | --- |
| Développeur 1 | 26.12 |
| Développeur 2 | 26.12 |
| Développeur 3 | 26.12 |
| Développeur 4 | 26.12 |
| Développeur 5 | 26.12 |
| Développeur 6 | 26.12 |
| Développeur 7 | 26.12 |

## Schedule

| ID | WBS | Task | Type | Duration | Start | Finish | Predecessors | Baseline start | Baseline finish | Baseline duration | Total slack | Free slack | Resources | Work | Cost | Baseline cost |
| --- | --- | --- | --- | --- | --- | --- | --- | --- | --- | --- | --- | --- | --- | --- | --- | --- |
| 1 | 1 | **RentPark** |  | 17.14d | 2025-12-05 | 2026-04-03 |  | 2025-12-05 | 2026-04-03 | 13.14d | 0d |  |  | 347.83h | 9,633.93 | 4,897.5 |
| 2 | 1.1 | **Modèle** |  | 2.86d | 2025-12-05 | 2025-12-16 |  | 2025-12-05 | 2026-01-30 | 6.71d | 14.29d |  |  | 43.67h | 1,140.57 | 1,528.02 |
| 3 | 1.1.1 | **Programmation du modèle** |  | 2.86d | 2025-12-05 | 2025-12-16 |  | 2025-12-05 | 2025-12-19 | 4.29d | 14.29d |  |  | 30h | 783.6 | 1,306 |
| 4 | 1.1.1.1 | Réalisation de classes |  | 15h | 2025-12-05 | 2025-12-12 |  | 2025-12-05 | 2025-12-19 | 30h | 15d |  | Développeur 2 [50%]; Développeur 1 [50%] | 15h | 391.8 | 783.6 |
| 5 | 1.1.1.2 | Réalisation de méthodes |  | 20h | 2025-12-05 | 2025-12-16 |  | 2025-12-05 | 2025-12-16 | 20h | 14.29d |  | Développeur 4 [50%]; Développeur 5 [50%] | 15h | 391.8 | 522.4 |
| 6 | 1.1.2 | Tests du modèle |  | 10h | 2025-12-05 | 2025-12-11 |  | 2025-12-19 | 2026-01-26 | 10h | 15.71d |  | Développeur 6 [50%]; Développeur 7 [50%] | 6.67h | 174.13 | 130.6 |
| 7 | 1.1.3 | Documentation |  | 7h | 2025-12-11 | 2025-12-16 | 6 | 2026-01-26 | 2026-01-30 | 7h | 14.71d |  | Développeur 3 | 7h | 182.84 | 91.42 |
| 8 | 1.2 | **Application WEB** |  | 4.43d | 2025-12-05 | 2025-12-19 |  | 2025-12-05 | 2026-07-10 | 13.71d | 4.29d | 0d |  | 51.17h | 1,336.47 | 3,369.48 |
| 9 | 1.2.1 | Conception des vues clients |  | 14h | 2025-12-05 | 2025-12-12 |  | 2025-12-05 | 2025-12-19 | 30h | 4.29d | 0d | Développeur 1 [50%]; Développeur 2 [50%] | 14h | 365.68 | 1,410.48 |
| 10 | 1.2.2 | Conception des vues employes |  | 14h | 2025-12-05 | 2025-12-12 |  | 2025-12-05 | 2025-12-19 | 30h | 6.71d |  | Développeur 4 [50%]; Développeur 5 [50%] | 14h | 365.68 | 783.6 |
| 11 | 1.2.3 | Lien avec le modèle |  | 5h | 2025-12-05 | 2025-12-10 |  | 2025-12-05 | 2026-01-29 | 30h | 8d |  | Développeur 6 [50%]; Développeur 7 [50%] | 4.17h | 108.83 | 1,175.4 |
| 12 | 1.2.4 | Lien avec la BDD |  | 2h | 2025-12-12 | 2025-12-12 | 9 | 2025-12-05 | 2025-12-19 | 10h | 6.43d |  | Développeur 7 | 2h | 52.24 |  |
| 13 | 1.2.5 | Tests sur l'application WEB |  | 10h | 2025-12-12 | 2025-12-17 | 9 | 2025-12-19 | 2026-01-26 | 10h | 4.29d | 0d | Développeur 4 [50%]; Développeur 5 [50%] | 10h | 261.2 |  |
| 14 | 1.2.6 | Documentation |  | 7h | 2025-12-18 | 2025-12-19 | 13 | 2026-01-26 | 2026-01-30 | 7h | 4.29d |  | Développeur 1 [50%]; Développeur 2 [50%] | 7h | 182.84 |  |
| 15 | 1.3 | Jalon Rendu Web | milestone, manual | 0d | 2026-01-23 | 2026-01-23 |  | 2026-01-23 | 2026-01-23 | 0d |  |  |  |  |  |  |
| 16 | 1.4 | **Application Mobile** |  | 6.71d | 2025-12-19 | 2026-01-30 | 8 | 2026-07-10 | 2027-02-05 | 17.29d | 4.29d | 0d |  | 122h | 3,186.64 |  |
| 17 | 1.4.1 | Conception des vues clients |  | 30h | 2025-12-19 | 2026-01-16 |  | 2026-07-10 | 2026-09-25 | 43h | 4.29d | 0d | Développeur 2 [50%]; Développeur 1 [50%] | 30h | 783.6 |  |
| 18 | 1.4.2 | Conception des vues employes |  | 30h | 2025-12-19 | 2026-01-16 |  |  |  |  | 6.71d |  | Développeur 4 [50%]; Développeur 5 [50%] | 30h | 783.6 |  |
| 19 | 1.4.3 | Lien avec le modèle |  | 15h | 2026-01-16 | 2026-01-29 | 17 | 2026-12-11 | 2027-02-05 | 35h | 4.57d |  | Développeur 6 [50%]; Développeur 7 [50%] | 15h | 391.8 |  |
| 20 | 1.4.4 | STUB |  | 15h | 2026-01-16 | 2026-01-29 | 17 | 2026-09-25 | 2026-10-16 | 15h | 4.57d |  | Développeur 3 | 15h | 391.8 |  |
| 21 | 1.4.5 | Lien avec la BDD |  | 15h | 2026-01-16 | 2026-01-29 | 17 | 2026-09-25 | 2026-10-16 | 15h | 4.57d |  | Développeur 2 [50%]; Développeur 1 [50%] | 15h | 391.8 |  |
| 22 | 1.4.6 | Tests sur l'application Mobile |  | 10h | 2026-01-16 | 2026-01-26 | 17 | 2026-09-25 | 2026-10-16 | 15h | 4.29d | 0d | Développeur 4 [50%]; Développeur 5 [50%] | 10h | 261.2 |  |
| 23 | 1.4.7 | Documentation |  | 7h | 2026-01-26 | 2026-01-30 | 22 | 2026-10-23 | 2026-10-30 | 7h | 4.29d |  | Développeur 6 [50%]; Développeur 7 [50%] | 7h | 182.84 |  |
| 24 | 1.5 | Jalon Rendu Mobile | milestone, manual | 0d | 2026-04-03 | 2026-04-03 |  | 2026-04-03 | 2026-04-03 | 0d |  |  |  |  |  |  |

| ID | WBS | Task | Type | Duration | Start | Finish | Predecessors | Baseline start | Baseline finish | Baseline duration | Total slack | Free slack | Constraint | Resources | Work | Cost |
| --- | --- | --- | --- | --- | --- | --- | --- | --- | --- | --- | --- | --- | --- | --- | --- | --- |
| 25 | 1.6 | **Suivi de projet** |  | 1.14d | 2025-12-12 | 2025-12-17 |  |  |  |  | 1.14d |  |  |  | 8h | 208.96 |
| 26 | 1.6.1 | Nouvelle planification |  | 8h | 2025-12-12 | 2025-12-16 |  |  |  |  | 14.29d |  | start no earlier than 2025-12-12 | Développeur 6 | 8h | 208.96 |
| 27 | 1.6.2 | Jalon Rendu Gestion | milestone, manual | 0d | 2025-12-17 | 2025-12-17 |  | 2025-12-17 | 2025-12-17 | 0d |  |  |  |  |  |  |
| 28 | 1.7 | Réunion 5 | manual | 1h | 2025-12-11 | 2025-12-11 |  | 2026-01-07 | 2026-01-07 | 1h |  |  |  |  |  | 182.84 |
| 29 | 1.8 | Réunion 6 | manual | 1h | 2026-02-04 | 2026-02-04 |  | 2026-02-04 | 2026-02-04 | 1h |  |  |  |  |  | 182.84 |
| 30 | 1.9 | Réunion 7 | manual | 1h | 2026-03-04 | 2026-03-04 |  | 2026-03-04 | 2026-03-04 | 1h |  |  |  |  |  | 182.84 |
| 31 | 1.10 | **Implémentation Web Services** |  | 5.14d | 2025-12-19 | 2026-01-23 | 8 | 2025-12-11 | 2026-08-07 | 14.86d | 4.71d | 0d |  |  | 56h | 1,462.72 |
| 32 | 1.10.1 | Développement des classes |  | 20h | 2025-12-19 | 2026-01-13 |  | 2025-12-11 | 2026-08-07 | 20h | 7d |  |  | Développeur 1 [50%]; Développeur 2 [50%] | 20h | 522.4 |
| 33 | 1.10.2 | Développement des méthodes |  | 20h | 2025-12-19 | 2026-01-13 |  |  |  |  | 4.71d | 0d |  | Développeur 4 [50%]; Développeur 5 [50%] | 20h | 522.4 |
| 34 | 1.10.3 | Consommation du Web Service |  | 5h | 2026-01-13 | 2026-01-14 | 33 | 2026-07-10 | 2026-07-17 | 5h | 4.71d | 0d |  | Développeur 1 [50%]; Développeur 2 [50%] | 5h | 130.6 |
| 35 | 1.10.4 | Tests du Web Service |  | 7h | 2026-01-15 | 2026-01-16 | 34 | 2026-07-10 | 2026-07-24 | 7h | 4.71d | 0d |  | Développeur 1 [50%]; Développeur 2 [50%] | 7h | 182.84 |
| 36 | 1.10.5 | Documentation |  | 4h | 2026-01-16 | 2026-01-23 | 35 | 2026-07-10 | 2026-07-17 | 4h | 4.71d |  |  | Développeur 4 [50%]; Développeur 5 [50%] | 4h | 104.48 |
| 37 | 1.11 | **Administration Blazor** |  | 2.86d | 2026-01-23 | 2026-02-04 | 31 | 2026-07-10 | 2026-09-25 | 6.43d | 4.71d |  |  |  | 35h | 914.2 |
| 38 | 1.11.1 | Développement des classes |  | 15h | 2026-01-23 | 2026-02-04 |  | 2026-07-31 | 2026-09-25 | 35h | 5.43d |  |  | Développeur 1 [50%]; Développeur 2 [50%] | 15h | 391.8 |
| 39 | 1.11.2 | Développement des méthodes |  | 20h | 2026-01-23 | 2026-02-04 |  |  |  |  | 4.71d |  |  | Développeur 4 [50%]; Développeur 5 [50%] | 20h | 522.4 |
| 40 | 1.12 | Jalon Rendu Blazor | milestone, manual | 0d | 2026-01-23 | 2026-01-23 |  | 2026-01-23 | 2026-01-23 | 0d |  |  |  |  |  |  |
| 41 | 1.13 | **Serveurs / Conteneurisation** |  | 1.71d | 2026-01-30 | 2026-02-06 | 16, 37 | 2026-02-04 | 2026-04-03 | 5.43d | 4.29d |  |  |  | 32h | 835.84 |
| 42 | 1.13.1 | Création d'images |  | 12h | 2026-01-30 | 2026-02-06 |  |  |  |  | 4.29d |  |  | Développeur 1 [50%]; Développeur 2 [50%] | 12h | 313.44 |
| 43 | 1.13.2 | Utilisation d'images |  | 10h | 2026-01-30 | 2026-02-04 |  |  |  |  | 4.57d |  |  | Développeur 4 [50%]; Développeur 5 [50%] | 10h | 261.2 |
| 44 | 1.13.3 | Mise en place Docker |  | 10h | 2026-01-30 | 2026-02-04 |  |  |  |  | 4.57d |  |  | Développeur 6 [50%]; Développeur 7 [50%] | 10h | 261.2 |

Notes:
- 28: Equipe totale
- 29: Equipe totale
- 30: Equipe totale
